# RC-Bauteiltester – Projektphase

Schedule from GanttProject, 2026-11-21 to 2027-01-25.
Projektpraktikum Computer Engineering
Zeitplan der Projektphase (Versuch 5, Aufgabe 2.2). Arbeitspakete AP1–AP17 entsprechen den GitHub-Issues.

## Calendars

- Project calendar: Mon-Sun working.

## Resources

| Resource |
| --- |
| Rolle A – Firmware-Kern (Framework, Zustandsautomat) |
| Rolle B – Bedienung (Taster, LEDs, Fehlerbehandlung) |
| Rolle C – Messtechnik (RC-Glied, Messung, Berechnung) |
| Rolle D – Display & Dokumentation |

## Schedule

| ID | WBS | Task | Type | Duration | Start | Finish | Predecessors | Resources |
| --- | --- | --- | --- | --- | --- | --- | --- | --- |
| 1 | 1 | **Sprint 1** |  | 24d | 2026-11-21 | 2026-12-14 |  |  |
| 2 | 1.1 | AP1 Projektsetup & Repository |  | 2d | 2026-11-21 | 2026-11-22 |  | Rolle A – Firmware-Kern (Framework, Zustandsautomat) |
| 3 | 1.2 | AP2 Event-Framework (Event-Queue) |  | 6d | 2026-11-23 | 2026-11-28 | 2 | Rolle A – Firmware-Kern (Framework, Zustandsautomat) |
| 4 | 1.3 | AP3 Taster & Interrupt (EXTI) |  | 9d | 2026-11-23 | 2026-12-01 | 2 | Rolle B – Bedienung (Taster, LEDs, Fehlerbehandlung) |
| 5 | 1.4 | AP4 LED-Statusanzeige |  | 9d | 2026-11-23 | 2026-12-01 | 2 | Rolle B – Bedienung (Taster, LEDs, Fehlerbehandlung) |
| 6 | 1.5 | AP5 Display-Modul (LCD über I²C) |  | 13d | 2026-11-23 | 2026-12-05 | 2 | Rolle D – Display & Dokumentation |
| 7 | 1.6 | AP6 Zustandsautomat (Idle/Betrieb/Cleanup/Ergebnis) |  | 8d | 2026-11-29 | 2026-12-06 | 3 | Rolle A – Firmware-Kern (Framework, Zustandsautomat) |
| 8 | 1.7 | AP7 Integration & Test Inkrement 1 |  | 5d | 2026-12-07 | 2026-12-11 | 4, 5, 6, 7 | Rolle A – Firmware-Kern (Framework, Zustandsautomat); Rolle B – Bedienung (Taster, LEDs, Fehlerbehandlung); Rolle C – Messtechnik (RC-Glied, Messung, Berechnung); Rolle D – Display & Dokumentation |
| 9 | 1.8 | AP8 Zwischenpräsentation vorbereiten |  | 5d | 2026-12-09 | 2026-12-13 | 7 | Rolle D – Display & Dokumentation |
| 10 | 1.9 | M1 Inkrement 1 fertig | milestone | 0d | 2026-12-13 | 2026-12-13 | 8 |  |
| 11 | 1.10 | M2 Zwischenpräsentation (KW 51) | milestone | 0d | 2026-12-14 | 2026-12-14 | 9, 10 |  |
| 12 | 2 | **Sprint 2** |  | 38d | 2026-12-19 | 2027-01-25 |  |  |
| 13 | 2.1 | AP9 Sprint-2-Planung & Projektplan aktualisieren |  | 2d | 2026-12-19 | 2026-12-20 | 11 | Rolle A – Firmware-Kern (Framework, Zustandsautomat); Rolle B – Bedienung (Taster, LEDs, Fehlerbehandlung); Rolle C – Messtechnik (RC-Glied, Messung, Berechnung); Rolle D – Display & Dokumentation |
| 14 | 2.2 | AP10 Entprellung des Tasters |  | 8d | 2026-12-21 | 2026-12-28 | 13 | Rolle B – Bedienung (Taster, LEDs, Fehlerbehandlung) |
| 15 | 2.3 | AP11 RC-Glied aufbauen & beschalten |  | 9d | 2026-12-21 | 2026-12-29 | 13 | Rolle C – Messtechnik (RC-Glied, Messung, Berechnung) |
| 16 | 2.4 | AP12 Nutzerführung über Display (Pflicht) |  | 21d | 2026-12-21 | 2027-01-10 | 13 | Rolle D – Display & Dokumentation |
| 17 | 2.5 | AP13 Messung (Sprung ausgeben, ADC-Messreihe) |  | 12d | 2026-12-30 | 2027-01-10 | 15 | Rolle C – Messtechnik (RC-Glied, Messung, Berechnung) |
| 18 | 2.6 | AP14 Berechnung der Zeitkonstante |  | 14d | 2026-12-30 | 2027-01-12 | 15 | Rolle C – Messtechnik (RC-Glied, Messung, Berechnung) |
| 19 | 2.7 | AP15 Fehlerbehandlung & Fehleingaben |  | 6d | 2027-01-11 | 2027-01-16 | 16, 17 | Rolle B – Bedienung (Taster, LEDs, Fehlerbehandlung) |
| 20 | 2.8 | AP16 Integration & Systemtest Inkrement 2 |  | 5d | 2027-01-17 | 2027-01-21 | 14, 18, 19 | Rolle A – Firmware-Kern (Framework, Zustandsautomat); Rolle B – Bedienung (Taster, LEDs, Fehlerbehandlung); Rolle C – Messtechnik (RC-Glied, Messung, Berechnung); Rolle D – Display & Dokumentation |
| 21 | 2.9 | AP17 Abschlusspräsentation & Kurzanleitung |  | 7d | 2027-01-18 | 2027-01-24 | 19 | Rolle D – Display & Dokumentation |
| 22 | 2.10 | M3 Inkrement 2 fertig | milestone | 0d | 2027-01-24 | 2027-01-24 | 20 |  |
| 23 | 2.11 | M4 Abschlusspräsentation (KW 5) | milestone | 0d | 2027-01-25 | 2027-01-25 | 21, 22 |  |

Notes:
- 2: STM32CubeIDE-Projekt `nucleo-f429zi-systemidentification-framework` (C++) anlegen, `main.c` → `main.cpp` umbenennen (Kursanleitung Anhang B), Projekt ins Repo einchecken, `.gitignore` prüfen.
- 3: Basisklasse `Event` mit `handleEvent()`, `std::queue<Event*>`, Abarbeitung in der Hauptschleife (Anhang C). Test-Events `TestEventGreen`, `TestEventRed`, `TestEventGreenBlink`.
- 4: Blauer Taster B1 (PC13) per EXTI-Interrupt; erzeugt `StartEvent` im Ruhezustand bzw. `CancelEvent` im Betrieb.
- 5: LD1 grün (PB0) dauerhaft = bereit, grün blinkend (Timer) = Betrieb, LD3 rot (PB14) = Cleanup, LD2 blau (PB7) = Ergebnis.
- 6: LCD-Ansteuerung aus Übung 3/4 als Modul übernehmen; `DisplayEvent` zum Senden von Texten. In Sprint 1 optional (Product Backlog 1), ab Sprint 2 Pflicht.
- 7: Ablauf nach Product Backlog 1: Idle → Betrieb (Warteprozess fester Dauer) → Ergebnis → Idle; Abbruch: Betrieb → Cleanup (keine Eingaben) → Idle.
- 8: Module zusammenführen, kompletten Ablauf mehrfach testen, Fehler beheben.
- 9: Produktdemo von Inkrement 1, Programmablauf-Diagramm, ggf. Folien. Jeder muss Implementierungsfragen beantworten können.
- 10: Inkrement 1 erfüllt Product Backlog 1 (Ablauf mit Onboard-Peripherie, Abbruch, Cleanup, Ergebnis)
- 11: Vorführung von Inkrement 1 vor dem Product Owner (genaues Datum in KW 51 eintragen)
- 13: Feedback der Zwischenpräsentation einarbeiten, Gantt-Plan und Issues anpassen, offene Punkte aus Backlog 1 übernehmen.
- 14: Doppelte Tastendrücke per Software-Entprellung (Timer/Zeitfenster) unterdrücken.
- 15: RC-Glied auf dem Breadboard aus vorhandenen R/C aufbauen; Eingang an DAC- bzw. PWM/GPIO-Ausgang, Ausgang U_a an ADC-Eingang. Theoretische Zeitkonstante T = R·C berechnen.
- 16: Anweisungen, Status, Ergebnis und Fehlermeldungen auf dem LCD; Ergebnis lange genug anzeigen.
- 17: Sprung erzeugen (`PWMEvent`/DAC), Abtastung per Timer und ADC (`StartMeasureEvent`), Messreihe mit mehreren Durchläufen speichern.
- 18: Verfahren aus der technischen Dokumentation wählen (Steigung bei t0 oder 3T-/95-%-Kriterium), Ausreißer entfernen, Mittelwert bilden, mit Theoriewert vergleichen (`CalculationEvent`, `FinalCalculationEvent`).
- 19: Kein Bauteil / Kurzschluss / Messung außerhalb des Bereichs / Timeout erkennen und auf dem Display melden.
- 20: Gesamtsystem testen, Messgenauigkeit mit mehreren Bauteilkombinationen prüfen, Code aufräumen.
- 21: Messestand-artige Funktionsdemo, schriftliche Kurzbedienungsanleitung, besonders gelungene Lösungen hervorheben.
- 22: Endprodukt erfüllt alle Mindestanforderungen (Zeitkonstante genau messen, Display-Führung, Fehlerbehandlung)
- 23: Funktionsdemo und schriftliche Kurzanleitung (genaues Datum in KW 5 eintragen)
